# Мачта

Schedule from MS Project, 2021-03-12 to 2021-04-13, costs in ₽.
РќР�РЈ Р’РЁР­ РџРµСЂРјСЊ

## Calendars

- Календарь проекта Мачта: Mon-Thu 08:30-12:00, 13:00-17:30; Fri 08:30-12:00, 13:00-16:30; Sat-Sun off.

## Resources

| Resource | Group | Unit | Rate |
| --- | --- | --- | --- |
| Снабженец | Отдел снабжения |  | 200 |
| Водитель | Транспортный отдел |  | 100 |
| Разнорабочий | Рабочие |  | 80 |
| Плотник | Рабочие |  | 120 |
| Контролер качества | ОТК |  | 100 |
| Монтажник | Рабочие |  | 130 |
| Бульдозерист | Транспортный отдел |  | 100 |
| Бетон |  | куб. м | 200 |
| Бензин |  | литры | 20 |
| Оплата блока |  | р. |  |

## Schedule

| ID | WBS | Task | Duration | Start | Finish | Predecessors | Total slack | Free slack | Constraint | Resources | Work | Cost |
| --- | --- | --- | --- | --- | --- | --- | --- | --- | --- | --- | --- | --- |
| 1 | 1 | **Изготовление и доставка блока** | 16d | 2021-03-12 | 2021-04-05 |  | 0d |  |  |  | 32h | 3,880 |
| 2 | 1.1 | Заказ блока | 1d | 2021-03-12 | 2021-03-15 |  | 0d |  |  | Снабженец | 8h | 1,600 |
| 3 | 1.2 | Изготовление блока | 14d | 2021-03-15 | 2021-04-02 | 2 | 0d |  | start no earlier than 2021-03-12 | Оплата блока [1 р.] |  |  |
| 4 | 1.3 | Доставка блока | 1d | 2021-04-02 | 2021-04-05 | 3 | 0d |  | start no earlier than 2021-03-12 | Водитель; Разнорабочий [200%]; Бензин [10 литры] | 24h | 2,280 |
| 5 | 2 | **Подготовка фундамента** | 14d | 2021-03-12 | 2021-04-01 |  | 2d |  |  |  | 192h | 18,720 |
| 6 | 2.1 | Земляные работы | 2d | 2021-03-12 | 2021-03-16 |  | 2d | 0d | start no earlier than 2021-03-12 | Разнорабочий [300%]; Бульдозерист; Бензин [10 литры] | 64h | 5,640 |
| 7 | 2.2 | Устройство опалубки | 3d | 2021-03-16 | 2021-03-19 | 6 | 2d | 0d | start no earlier than 2021-03-12 | Плотник; Разнорабочий | 48h | 4,800 |
| 8 | 2.3 | Бетонирование | 1d | 2021-03-19 | 2021-03-22 | 7 | 2d | 0d |  | Разнорабочий [200%]; Бетон [3 куб. м] | 16h | 1,880 |
| 9 | 2.4 | Твердение бетона | 8d | 2021-03-22 | 2021-04-01 | 8 | 2d |  | start no earlier than 2021-03-12 | Контролер качества | 64h | 6,400 |
| 10 | 3 | **Изготовление и установка мачты на блок** | 22d | 2021-03-12 | 2021-04-13 |  | 0d |  |  |  | 456h | 48,040 |
| 11 | 3.1 | Установка блока | 2d | 2021-04-05 | 2021-04-07 | 4, 9 | 0d |  |  | Разнорабочий; Монтажник [200%] | 48h | 5,440 |
| 12 | 3.2 | Изготовление мачты | 10d | 2021-03-12 | 2021-03-26 |  | 7d | 0d |  | Разнорабочий [200%]; Монтажник [200%] | 288h | 31,040 |
| 13 | 3.3 | Доставка мачты | 1d | 2021-03-26 | 2021-03-29 | 12 | 7d |  |  | Водитель; Бензин [10 литры]; Разнорабочий [200%] | 24h | 2,280 |
| 14 | 3.4 | Установка мачты | 4d | 2021-04-07 | 2021-04-13 | 13, 11 | 0d |  |  | Монтажник; Разнорабочий [200%] | 96h | 9,280 |
