# Создание альбомов для выпускников

Schedule from MS Project, 2022-05-04 to 2022-06-18, costs in р., A marks actual dates.
Microsoft

## Calendars

- Календарь организации фотосессии альбома: Mon-Fri 10:00-13:30, 14:00-18:00; Sat 10:00-13:30, 14:00-17:00; Sun off. Exceptions (off unless hours are given): 2022-05-08 to 2022-05-10 (9 Мая), 2022-06-12 to 2022-06-14 (День России).

## Resources

| Resource | Group | Unit | Rate |
| --- | --- | --- | --- |
| Снабженец | Отдел снабжений |  | 200 |
| Водитель | Транспортный отдел |  | 100 |
| Фотограф | Фотограф |  | 700 |
| Компоновщик | Отдел производства |  | 200 |
| Ретушер | Отдел производства |  | 300 |
| Менеджер | Отдел производства |  | 300 |
| Принтер для печати фотографий |  |  |  |
| Альбомы |  | шт | 500 |
| Бумага для печати |  | лист | 1 |
| Бензин |  | литр. | 65 |
| Упаковочная пленка |  | метр. | 10 |
| Студия для съемок |  |  |  |
| Краска |  | литр. | 50 |

## Schedule

| ID | WBS | Task | Type | Duration | Start | Finish | Predecessors | Complete | Remaining | Total slack | Free slack | Constraint | Resources | Work | Actual work | Cost | Actual cost |
| --- | --- | --- | --- | --- | --- | --- | --- | --- | --- | --- | --- | --- | --- | --- | --- | --- | --- |
| 1 | 1 | **Согласование информации** |  | 1.25d | 2022-05-04 10:00 A | 2022-05-05 12:30 A |  | 100% |  |  |  |  |  | 10h | 10h | 3,000 | 3,000 |
| 2 | 1.1 | Получение списка выпускников |  | 1h | 2022-05-04 10:00 A | 2022-05-04 11:00 A |  | 100% |  |  |  |  | Менеджер | 1h | 1h | 300 | 300 |
| 3 | 1.2 | **Подготовка договора об оказании услуг** |  | 0.5d | 2022-05-04 11:00 A | 2022-05-04 15:30 A | 2 | 100% |  |  |  |  |  | 4h | 4h | 1,200 | 1,200 |
| 4 | 1.2.1 | Подписание договора |  | 3h | 2022-05-04 11:00 A | 2022-05-04 14:30 A |  | 100% |  |  |  |  | Менеджер | 3h | 3h | 900 | 900 |
| 5 | 1.2.2 | Получение предоплаты |  | 1h | 2022-05-04 14:30 A | 2022-05-04 15:30 A | 4 | 100% |  |  |  |  | Менеджер | 1h | 1h | 300 | 300 |
| 6 | 1.3 | Согласование фотосессии |  | 1h | 2022-05-04 15:30 A | 2022-05-04 16:30 A | 5 | 100% |  |  |  |  | Менеджер | 1h | 1h | 300 | 300 |
| 7 | 1.4 | Поиск студии для фотосессии |  | 2h | 2022-05-04 16:30 A | 2022-05-05 10:30 A | 6 | 100% |  |  |  |  | Менеджер | 2h | 2h | 600 | 600 |
| 8 | 1.5 | Согласование макета альбома |  | 1h | 2022-05-05 10:30 A | 2022-05-05 11:30 A | 7 | 100% |  |  |  |  | Менеджер | 1h | 1h | 300 | 300 |
| 9 | 1.6 | Согласование даты сдачи работы |  | 1h | 2022-05-05 11:30 A | 2022-05-05 12:30 A | 8 | 100% |  |  |  |  | Менеджер | 1h | 1h | 300 | 300 |
| 10 | 2 | **Организация фотосессии** |  | 1.38d | 2022-05-12 11:30 | 2022-05-13 15:30 | 1, 6FS+4d |  |  | 0d |  |  |  | 12h |  | 8,000 |  |
| 11 | 2.1 | Подготовка студии для фотосессии |  | 4h | 2022-05-12 11:30 | 2022-05-12 16:00 |  |  |  | 0d |  |  | Фотограф; Студия для съемок [0.1%] | 4h |  | 2,800 |  |
| 12 | 2.2 | Подготовка вариантов фотографирования |  | 1h | 2022-05-12 16:00 | 2022-05-12 17:00 | 11 |  |  | 0d |  |  | Менеджер; Фотограф | 2h |  | 1,000 |  |
| 13 | 2.3 | Организация фотосессии в указанную дату |  | 5h | 2022-05-12 17:00 | 2022-05-13 14:30 | 12 |  |  | 0d |  | start no earlier than 2022-05-06 08:00 | Фотограф; Студия для съемок [0.1%] | 5h |  | 3,500 |  |
| 14 | 2.4 | Завершение работ |  | 1h | 2022-05-13 14:30 | 2022-05-13 15:30 | 13 |  |  | 0d |  |  | Фотограф | 1h |  | 700 |  |
| 15 | 2.5 | Сдача студии | milestone | 0h | 2022-05-13 15:30 | 2022-05-13 15:30 | 14 |  |  | 0d |  |  | Менеджер |  |  |  |  |
| 16 | 3 | **Заказ альбомов** |  | 9d | 2022-05-05 12:30 A | 2022-05-19 11:30 | 1, 8 | 48% | 4.64d | 7.12d |  |  |  | 80h | 34.87h | 16,650 | 6,975 |
| 17 | 3.1 | Утверждение макета альбома |  | 1d | 2022-05-05 12:30 | 2022-05-06 13:00 |  |  |  | 4.36d | 0d |  | Менеджер | 8h |  | 2,400 |  |
| 18 | 3.2 | Заказ альбома по макету у поставщика |  | 7d | 2022-05-06 13:00 A | 2022-05-18 11:00 | 17 | 62% | 2.64d | 7.12d | 0d |  | Снабженец | 56h | 34.87h | 11,200 | 6,975 |
| 19 | 3.3 | Получение всех альбомов |  | 1d | 2022-05-18 11:00 | 2022-05-19 11:30 | 18 |  |  | 7.12d |  |  | Снабженец; Бензин [10 литр.]; Водитель | 16h |  | 3,050 |  |
| 20 | 4 | **Подготовка фотографий** |  | 14.25d | 2022-05-13 15:30 A | 2022-06-01 12:00 | 10 | 4% | 13.62d | 0d |  |  |  | 160h | 7.75h | 47,600 | 2,325 |
| 21 | 4.1 | Редактирование фотографий |  | 5d | 2022-05-13 15:30 A | 2022-05-20 11:00 |  | 10% | 4.52d | 0d |  | start no earlier than 2022-05-13 08:00 | Ретушер [200%] | 80h | 7.75h | 24,000 | 2,325 |
| 22 | 4.2 | Подгонка фотографий под один стиль |  | 2d | 2022-05-20 11:00 | 2022-05-23 13:00 | 21 |  |  | 0d |  |  | Компоновщик; Ретушер [200%] | 32h |  | 8,000 |  |
| 23 | 4.3 | Создание альбома отредактированных фотографий |  | 4h | 2022-05-23 13:00 | 2022-05-23 17:30 | 22 |  |  | 0d |  |  | Компоновщик | 4h |  | 800 |  |
| 24 | 4.4 | Представление фотографий заказчику |  | 1h | 2022-05-23 17:30 | 2022-05-24 10:30 | 23 |  |  | 0d |  |  | Менеджер | 1h |  | 300 |  |
| 25 | 4.5 | Поиск студии для фотосессии |  | 2h | 2022-05-23 10:00 | 2022-05-23 12:00 | 24FS-1d |  |  | 0d |  |  | Менеджер | 2h |  | 600 |  |

| ID | WBS | Task | Type | Duration | Start | Finish | Predecessors | Total slack | Resources | Work | Cost |
| --- | --- | --- | --- | --- | --- | --- | --- | --- | --- | --- | --- |
| 26 | 4.6 | **Организация повторной фотосессии при возникновении правок** |  | 1.25d | 2022-05-26 14:00 | 2022-05-27 16:30 | 25FS+3d | 0d |  | 8h | 5,600 |
| 27 | 4.6.1 | Подготовка студии для фотосессии |  | 2h | 2022-05-26 14:00 | 2022-05-26 18:00 |  | 0d | Фотограф; Студия для съемок [0.1%] | 2h | 1,400 |
| 28 | 4.6.2 | Организация фотосессии в указанную дату |  | 5h | 2022-05-27 10:00 | 2022-05-27 15:30 | 27 | 0d | Студия для съемок [0.1%]; Фотограф | 5h | 3,500 |
| 29 | 4.6.3 | Завершение работ |  | 1h | 2022-05-27 15:30 | 2022-05-27 16:30 | 28 | 0d | Фотограф | 1h | 700 |
| 30 | 4.6.4 | Сдача студии | milestone | 0h | 2022-05-27 16:30 | 2022-05-27 16:30 | 29 | 0d | Менеджер |  |  |
| 31 | 4.7 | Внесение правок |  | 2d | 2022-05-27 16:30 | 2022-05-31 10:30 | 26 | 0d | Компоновщик; Ретушер | 32h | 8,000 |
| 32 | 4.8 | Представление фотографий заказчику |  | 1h | 2022-06-01 11:00 | 2022-06-01 12:00 | 31FS+1d | 0d | Менеджер | 1h | 300 |
| 33 | 5 | **Подготовка альбомов к сдаче** |  | 11.12d | 2022-06-01 12:00 | 2022-06-17 13:00 | 20, 16FS+3d | 0d |  | 82h | 44,030 |
| 34 | 5.1 | Печать фотографий |  | 2d | 2022-06-01 12:00 | 2022-06-03 13:00 |  | 0d | Бумага для печати [300 лист]; Краска [10 литр.]; Менеджер | 16h | 5,600 |
| 35 | 5.2 | Подготовка предварительного альбома |  | 1d | 2022-06-03 13:00 | 2022-06-04 13:30 | 34 | 0d | Компоновщик; Альбомы [1 шт] | 8h | 2,100 |
| 36 | 5.3 | Показ предварительного результата заказчику |  | 1h | 2022-06-06 15:30 | 2022-06-06 16:30 | 35FS+1d | 0d | Менеджер | 1h | 300 |
| 37 | 5.4 | Внесение правок |  | 2d | 2022-06-06 16:30 | 2022-06-08 17:30 | 36 | 0d | Компоновщик | 16h | 3,200 |
| 38 | 5.5 | Подготовка оставшихся альбомов |  | 5d | 2022-06-08 17:30 | 2022-06-17 13:00 | 37 | 0d | Альбомы [49 шт]; Компоновщик; Упаковочная пленка [3 метр.] | 40h | 32,530 |
| 39 | 5.6 | Получение остатка оплаты |  | 1h | 2022-06-06 16:30 | 2022-06-06 17:30 | 36 | 5.88d | Менеджер | 1h | 300 |
| 40 | 6 | **Сдача альбомов заказчику** |  | 1d | 2022-06-17 13:00 | 2022-06-18 13:30 | 33, 39 | 0d |  | 16h | 3,850 |
| 41 | 6.1 | Транспортировка альбомов заказчику |  | 1d | 2022-06-17 13:00 | 2022-06-18 13:30 | 39FS+1d | 0d | Бензин [10 литр.]; Водитель; Менеджер | 16h | 3,850 |
| 42 | 6.2 | Завершение работы | milestone | 0h | 2022-06-18 13:30 | 2022-06-18 13:30 | 41 | 0d | Менеджер |  |  |
